# cronograma02

How a schedule from MS Project changed from version to version. A marks actual dates.

## Version 1 (saved 2022-10-10)

Note of the change: update: cronograma en project, con línea base

| ID | WBS | Task | Duration | Start | Finish | Predecessors | Total float |
| --- | --- | --- | --- | --- | --- | --- | --- |
| 1 | 1 | **DISEÑO** | 110.33d | 2022-11-15 | 2023-04-18 |  | 0d |
| 2 | 1.1 | **Diseño Gráfico** | 110.33d | 2022-11-15 | 2023-04-18 |  | 0d |
| 3 |  | Analizar el manual de identidad | 5.75d | 2023-01-05 | 2023-01-13 | 5, 8 | 0d |
| 4 |  | Hacer propuestas de diseño sobre la identidad gráfica | 11.25d | 2022-11-15 | 2022-11-30 | 76 | 0d |
| 5 |  | Hacer cambios y feedback con IT | 6.5d | 2022-12-15 | 2022-12-26 | 10 | 8.42d |
| 6 |  | Hacer cambios y feedback con usuario | 16.08d | 2023-03-27 | 2023-04-18 | 11 | 0d |
| 7 | 1.2 | **Diseño UX/UI** | 94.25d | 2022-11-15 | 2023-03-27 |  | 0d |
| 8 |  | Realizar cambios para diseños intuitivos | 14.92d | 2022-12-15 | 2023-01-05 | 10 | 0d |
| 9 |  | Crear plataforma ergonómica | 7.67d | 2022-11-15 | 2022-11-25 | 76 | 3.58d |
| 10 |  | Planificar cambios con IT | 11.25d | 2022-11-30 | 2022-12-15 | 4, 9 | 0d |
| 11 |  | Hacer pruebas de usuario y usabilidad | 19.17d | 2023-02-28 | 2023-03-27 | 37SS, 38SS, 39SS, 40SS, 41SS, 42SS | 0d |
| 12 | 2 | **PROGRAMACIÓN** | 150.34d | 2022-08-19 | 2023-03-17 |  | 37.33d |
| 13 | 2.1 | **Front-end** | 40.99d | 2023-01-13 | 2023-03-13 |  | 0d |
| 14 | 2.1.1 | **La vista padre (layout)** | 12.83d | 2023-01-13 | 2023-02-01 |  | 0d |
| 15 |  | Programar headers | 6.42d | 2023-01-13 | 2023-01-23 | 3 | 6.41d |
| 16 |  | Determinar menús comunes | 12.83d | 2023-01-13 | 2023-02-01 | 3 | 0d |
| 17 | 2.1.2 | **La vista hijo (sub-layouts)** | 14.08d | 2023-02-01 | 2023-02-21 |  | 0d |
| 18 |  | Diseñar registro | 2.92d | 2023-02-06 | 2023-02-09 | 19 | 7.66d |
| 19 |  | Diseñar login | 3.5d | 2023-02-01 | 2023-02-06 | 15, 16 | 0d |
| 20 |  | Diseñar perfil | 4.5d | 2023-02-06 | 2023-02-13 | 19 | 6.08d |
| 21 |  | Diseñar pacientes | 6.42d | 2023-02-06 | 2023-02-15 | 19 | 4.16d |
| 22 |  | Diseñar templates | 10.58d | 2023-02-06 | 2023-02-21 | 19 | 0d |
| 23 |  | Diseñar paciente (c/u) | 6.42d | 2023-02-06 | 2023-02-15 | 19 | 4.16d |
| 24 | 2.1.3 | **Forms conectados a endpoints (html)** | 6.5d | 2023-03-03 | 2023-03-13 |  | 41.17d |
| 25 |  | Programar modals estáticos | 3.5d | 2023-03-08 | 2023-03-13 | 28 | 41.17d |
| 26 |  | Programar modals dinámicos | 3.5d | 2023-03-03 | 2023-03-08 | 29 | 44.17d |
| 27 | 2.1.4 | **Scripts para autogenerar html (js)** | 10.58d | 2023-02-21 | 2023-03-07 |  | 0d |
| 28 |  | Programar códigos js al cargar la página | 5.58d | 2023-02-28 | 2023-03-07 | 30 | 41.17d |
| 29 |  | Programar códigos js para modificar un modal | 2.58d | 2023-02-28 | 2023-03-02 | 30 | 41.17d |
| 30 |  | Programar API en server | 5d | 2023-02-21 | 2023-02-28 | 18, 20, 21, 22, 23, 49FF | 0d |
| 31 | 2.1.5 | **Botones para editar y/o borrar elementos** | 6.5d | 2023-03-03 | 2023-03-13 |  | 41.17d |
| 32 |  | Editar/borrar templates | 6.5d | 2023-03-03 | 2023-03-13 | 29 | 41.17d |
| 33 |  | Editar/borrar pacientes | 6.5d | 2023-03-03 | 2023-03-13 | 29 | 41.17d |
| 34 |  | Editar/borrar registros | 6.5d | 2023-03-03 | 2023-03-13 | 29 | 41.17d |
| 35 | 2.2 | **Back-end** | 150.34d | 2022-08-19 | 2023-03-17 |  | 34.73d |
| 36 | 2.2.1 | **Endpoints de páginas** | 12.92d | 2023-02-28 | 2023-03-17 |  | 0d |
| 37 |  | Programar registro | 6.08d | 2023-02-28 | 2023-03-08 | 30 | 0d |
| 38 |  | Programar login | 5.42d | 2023-02-28 | 2023-03-07 | 30 | 0d |
| 39 |  | Programar perfil | 5.83d | 2023-02-28 | 2023-03-08 | 30 | 0d |
| 40 |  | Programar pacientes | 9d | 2023-02-28 | 2023-03-13 | 30 | 0d |
| 41 |  | Programar templates | 12.92d | 2023-02-28 | 2023-03-17 | 30 | 0d |
| 42 |  | Programar pacientes (c/u) | 3.92d | 2023-02-28 | 2023-03-06 | 30 | 0d |
| 43 | 2.2.2 | **Endpoints de forms (input/output)** | 3.58d | 2023-02-28 | 2023-03-03 |  | 30.38d |
| 44 |  | Info de perfil | 2.58d | 2023-02-28 | 2023-03-02 | 30 | 31.38d |
| 45 |  | Info del paciente | 2.25d | 2023-02-28 | 2023-03-02 | 30 | 31.71d |
| 46 |  | Info del template | 3.58d | 2023-02-28 | 2023-03-03 | 30 | 30.38d |
| 47 |  | Info del registro | 2.25d | 2023-02-28 | 2023-03-02 | 30 | 31.71d |
| 48 | 2.2.3 | **Conexión a base de datos** | 3.25d | 2022-08-19 | 2022-08-24 |  | 134.17d |
| 49 |  | Mongo DB (local) | 3.25d | 2022-08-19 | 2022-08-24 |  | 134.17d |
| 50 |  | Mongo DB Atlas (remoto) | 3.25d | 2022-08-19 | 2022-08-24 | 49SS | 181.82d |
| 51 | 3 | **HOSTING** | 172.67d | 2022-08-19 | 2023-04-18 |  | 15d |
| 52 | 3.1 | **Heroku (Host)** | 172.67d | 2022-08-19 | 2023-04-18 |  | 15d |
| 53 |  | Dar de alta una cuenta | 0.65d | 2022-08-24 | 2022-08-24 | 50 | 183.77d |
| 54 |  | Crear proyecto en host | 0.65d | 2022-08-19 | 2022-08-19 |  | 187.02d |
| 55 |  | Subir el código actualizado | 1.29d | 2023-04-17 | 2023-04-18 | 37, 38, 39, 40, 42, 44, 45, 46, 47, 41, 6FF | 0d |
| 56 | 3.2 | **Mongo DB Atlas (Cluster de datos)** | 134.82d | 2022-08-24 | 2023-03-01 |  | 49.6d |
| 57 |  | Dar de alta una cuenta | 0.65d | 2022-08-24 | 2022-08-24 | 50 | 181.82d |
| 58 |  | Crear clúster de datos | 0.65d | 2022-08-24 | 2022-08-25 | 57 | 181.82d |
| 59 |  | Obtener clave de la base de datos | 0.65d | 2022-08-25 | 2022-08-26 | 58 | 181.82d |
| 60 |  | Integrar clave como dirección de la BD en back-end | 0.65d | 2023-02-28 | 2023-03-01 | 59, 30 | 49.6d |
| 61 | 4 | **LOGÍSTICA** | 187.67d | 2022-08-19 | 2023-05-09 |  | 0d |
| 62 | 4.1 | **Estudio y Análisis** | 19.58d | 2022-08-19 | 2022-09-15 |  | 0d |
| 63 |  | Realizar estudio de mercado | 13.08d | 2022-08-29 | 2022-09-15 | 64 | 0d |
| 64 |  | Obtener la opinión de los clientes | 3.58d | 2022-08-23 | 2022-08-29 | 66 | 0d |
| 65 |  | Redactar análisis de opinión | 5.83d | 2022-08-29 | 2022-09-06 | 64 | 7.25d |
| 66 |  | Definir las estrategias necesarias | 2.92d | 2022-08-19 | 2022-08-23 |  | 0d |
| 67 | 4.2 | **Administración** | 168.09d | 2022-09-15 | 2023-05-09 |  | 0d |
| 68 | 4.2.1 | **Planificación** | 36.83d | 2022-09-15 | 2022-11-07 |  | 0d |
| 69 |  | Definición de objetivos y metas | 3.58d | 2022-09-20 | 2022-09-26 | 70 | 0d |
| 70 |  | Definición del marco teórico | 2.92d | 2022-09-15 | 2022-09-20 | 65, 63 | 0d |

| ID | WBS | Task | Duration | Start | Finish | Predecessors | Total float |
| --- | --- | --- | --- | --- | --- | --- | --- |
| 71 |  | Identificar los eventos que podrían ocurrir en el futuro | 3.58d | 2022-10-12 | 2022-10-17 | 75 | 131.26d |
| 72 |  | Realizar manual y protocolos para resolver problemas a corto, mediano y largo plazo | 14.58d | 2022-10-17 | 2022-11-07 | 71 | 131.26d |
| 73 | 4.2.2 | **Organización** | 26.01d | 2022-10-10 | 2022-11-15 |  | 0d |
| 74 |  | Dividir carga de trabajo | 4.17d | 2022-10-21 | 2022-10-27 | 78 | 0d |
| 75 |  | Selección de autoridad administrativa | 1.92d | 2022-10-10 | 2022-10-12 | 85 | 0d |
| 76 |  | Proveer de materiales y recursos a cada sector | 12.92d | 2022-10-27 | 2022-11-15 | 74 | 0d |
| 77 |  | Realizar organigrama de la empresa | 5.25d | 2022-10-10 | 2022-10-17 | 85 | 146.09d |
| 78 |  | Planificar el proyecto | 7d | 2022-10-12 | 2022-10-21 | 75 | 0d |
| 79 |  | Evaluación y análisis de resultados obtenidos | 15d | 2023-04-18 | 2023-05-09 | 55 | 0d |
| 80 | 4.3 | **Estudio y análisis** | 20.75d | 2022-09-26 | 2022-10-24 |  | 0d |
| 81 | 4.3.1 | **Consultoría y análisis económico** | 5.42d | 2022-09-26 | 2022-10-03 |  | 0d |
| 82 |  | Crear el presupuesto | 3.5d | 2022-09-26 | 2022-09-29 | 69 | 1.92d |
| 83 |  | Hacer proyección de ventas | 5.42d | 2022-09-26 | 2022-10-03 | 69 | 0d |
| 84 | 4.3.2 | **Plan financiero** | 4.83d | 2022-10-03 | 2022-10-10 |  | 0d |
| 85 |  | Administración de financiaciones e inversiones | 4.83d | 2022-10-03 | 2022-10-10 | 82, 83 | 0d |
| 86 |  | Analizar las problemáticas financieras | 2.58d | 2022-10-03 | 2022-10-06 | 82, 83 | 153.59d |
| 87 |  | Crear las estrategias | 5d | 2022-10-17 | 2022-10-24 | 71 | 140.84d |

## Version 2 (saved 2022-10-11)

Note of the change: update: hitos done en mpp, estimacion de recursos done

Last finish 2023-05-09 → 2023-04-24 (-15d).

Added:

| ID | Task | Duration | Start | Finish | Predecessors |
| --- | --- | --- | --- | --- | --- |
| 7 | Diseño gráfico listo | 0d | 2023-04-18 | 2023-04-18 | 6 |
| 13 | Diseño UX/UI listo | 0d | 2023-03-27 | 2023-03-27 | 12 |
| 53 | Programación Lista | 0d | 2023-04-18 | 2023-04-18 | 58 |
| 59 | Host listo | 0d | 2023-04-18 | 2023-04-18 | 58 |
| 65 | Clúster de datos listo | 0d | 2023-03-01 | 2023-03-01 | 64 |
| 83 | Organización lista | 0d | 2022-10-17 | 2022-10-17 | 82 |

Changed:

| ID | Task | Finish | Duration | Total float | Predecessors | Other |
| --- | --- | --- | --- | --- | --- | --- |
| 14 | **PROGRAMACIÓN** | 2023-03-17 → 2023-04-18 (+32d) | 150.34d → 172.67d | 37.33d → 4d |  |  |
| 58 | Subir el código actualizado |  |  |  | 39, 40, 41, 42, 44, 46, 47, 48, 49, 43, 6FF → 39, 40, 41, 42, 44, 46, 47, 48, 49, 43, 6FF, 64 |  |
| 66 | **LOGÍSTICA** | 2023-05-09 → 2023-04-24 (-15d) | 187.67d → 176.67d |  |  |  |
| 72 | **Administración** | 2023-05-09 → 2023-04-24 (-15d) | 168.09d → 157.09d |  |  |  |
| 85 | Evaluación y análisis final de resultados obtenidos | 2023-05-09 → 2023-04-24 (-15d) | 15d → 4d |  |  | was named Evaluación y análisis de resultados obtenidos |

## Version 3 (saved 2022-10-12)

Note of the change: update: linea base guardada con los cambios en mpp de ayer

Last finish stays 2023-04-24.

Changed:

| ID | Task | Other |
| --- | --- | --- |
| 7 | Diseño gráfico listo | baseline start none → 2023-04-18; baseline finish none → 2023-04-18 |
| 13 | Diseño UX/UI listo | baseline start none → 2023-03-27; baseline finish none → 2023-03-27 |
| 14 | **PROGRAMACIÓN** | baseline finish 2023-03-17 → 2023-04-18 |
| 53 | Programación Lista | baseline start none → 2023-04-18; baseline finish none → 2023-04-18 |
| 59 | Host listo | baseline start none → 2023-04-18; baseline finish none → 2023-04-18 |
| 65 | Clúster de datos listo | baseline start none → 2023-03-01; baseline finish none → 2023-03-01 |
| 66 | **LOGÍSTICA** | baseline finish 2023-05-09 → 2023-04-24 |
| 72 | **Administración** | baseline finish 2023-05-09 → 2023-04-24 |
| 83 | Organización lista | baseline start none → 2022-10-17; baseline finish none → 2022-10-17 |
| 85 | Evaluación y análisis final de resultados obtenidos | baseline finish 2023-05-09 → 2023-04-24 |

## Version 4 (saved 2022-10-12)

Note of the change: update: cronograma mpp ya tiene unidos cabos sueltos al cierre

Last finish stays 2023-04-24.

Changed:

| ID | Task | Predecessors | Other |
| --- | --- | --- | --- |
| 51 | Habilitar API para Mongo DB (local) |  | was named Mongo DB (local) |
| 52 | Habilitar API Mongo DB Atlas (remoto) |  | was named Mongo DB Atlas (remoto) |
| 74 | Definir objetivos y metas |  | was named Definición de objetivos y metas |
| 75 | Definir marco teórico |  | was named Definición del marco teórico |
| 80 | Seleccionar autoridad administrativa |  | was named Selección de autoridad administrativa |
| 84 | Dirigir y planificar el proyecto |  | was named Planificar el proyecto |
| 85 | Evaluación y análisis final de resultados obtenidos | 58 → 58, 92, 93 |  |
| 91 | Administrar financiamientos e inversiones |  | was named Administración de financiaciones e inversiones |

## Version 5 (saved 2022-10-18)

Note of the change: update: cronograma arreglado

Last finish stays 2023-04-24.

Changed:

| ID | Task | Start | Finish | Duration | Total float | Predecessors | Other |
| --- | --- | --- | --- | --- | --- | --- | --- |
| 14 | **PROGRAMACIÓN** | 2022-08-19 → 2023-01-13 (+147d) |  | 172.67d → 67.16d | 4d → 0d |  | baseline start 2022-08-19 → 2023-01-13 |
| 37 | **Back-end** | 2022-08-19 → 2023-02-06 (+171d) |  | 150.34d → 28.5d | 21.04d → 12.33d |  | baseline start 2022-08-19 → 2023-02-06 |
| 50 | **Conexión a base de datos** | 2022-08-19 → 2023-02-06 (+171d) | 2022-08-24 → 2023-02-10 (+170d) |  | 134.17d → 12.33d |  | baseline start 2022-08-19 → 2023-02-06; baseline finish 2022-08-24 → 2023-02-10 |
| 51 | Habilitar API para Mongo DB (local) | 2022-08-19 → 2023-02-06 (+171d) | 2022-08-24 → 2023-02-10 (+170d) |  | 134.17d → 12.33d | none → 21 | baseline start 2022-08-19 → 2023-02-06; baseline finish 2022-08-24 → 2023-02-10 |
| 52 | Habilitar API Mongo DB Atlas (remoto) | 2022-08-19 → 2023-02-06 (+171d) | 2022-08-24 → 2023-02-10 (+170d) |  | 165.53d → 43.69d |  | baseline start 2022-08-19 → 2023-02-06; baseline finish 2022-08-24 → 2023-02-10 |
| 54 | **HOSTING** | 2022-08-19 → 2023-02-10 (+175d) |  | 172.67d → 47.58d |  |  | baseline start 2022-08-19 → 2023-02-10 |
| 55 | **Heroku (Host)** | 2022-08-19 → 2023-02-10 (+175d) |  | 172.67d → 47.58d |  |  | baseline start 2022-08-19 → 2023-02-10 |
| 56 | Dar de alta una cuenta | 2022-08-24 → 2023-02-10 (+170d) | 2022-08-24 → 2023-02-10 (+170d) |  | 172.77d → 44.99d |  | baseline start 2022-08-24 → 2023-02-10; baseline finish 2022-08-24 → 2023-02-10 |
| 57 | Crear proyecto en host | 2022-08-19 → 2023-02-10 (+175d) | 2022-08-19 → 2023-02-13 (+178d) |  | 176.02d → 44.99d | none → 56 | baseline start 2022-08-19 → 2023-02-10; baseline finish 2022-08-19 → 2023-02-13 |
| 58 | Subir el código actualizado |  |  |  |  | 39, 40, 41, 42, 44, 46, 47, 48, 49, 43, 6FF, 64 → 39, 40, 41, 42, 44, 46, 47, 48, 49, 43, 6FF, 64, 57 |  |
| 60 | **Mongo DB Atlas (Cluster de datos)** | 2022-08-24 → 2023-02-10 (+170d) |  | 134.82d → 12.98d |  |  | baseline start 2022-08-24 → 2023-02-10 |
| 61 | Dar de alta una cuenta | 2022-08-24 → 2023-02-10 (+170d) | 2022-08-24 → 2023-02-10 (+170d) |  | 165.53d → 43.69d |  | baseline start 2022-08-24 → 2023-02-10; baseline finish 2022-08-24 → 2023-02-10 |
| 62 | Crear clúster de datos | 2022-08-24 → 2023-02-10 (+170d) | 2022-08-25 → 2023-02-13 (+172d) |  | 165.53d → 43.69d |  | baseline start 2022-08-24 → 2023-02-10; baseline finish 2022-08-25 → 2023-02-13 |
| 63 | Obtener clave de la base de datos | 2022-08-25 → 2023-02-13 (+172d) | 2022-08-26 → 2023-02-14 (+172d) |  | 165.53d → 43.69d |  | baseline start 2022-08-25 → 2023-02-13; baseline finish 2022-08-26 → 2023-02-14 |
